# TaskPlan - ISO Datatype - Option C

Schedule from MS Project, 2010-03-01 to 2010-05-21.
NIH/NCI

## Calendars

- Standard: Mon-Fri 08:00-12:00, 13:00-17:00; Sat-Sun off.

## Resources

| Resource |
| --- |
| SDK |
| caGrid |
| caAdapter |
| QA |

## Schedule

| ID | WBS | Task | Type | Duration | Start | Finish | Predecessors | Total slack | Free slack | Constraint | Resources | Work |
| --- | --- | --- | --- | --- | --- | --- | --- | --- | --- | --- | --- | --- |
| 1 | 1 | **ISO Datatype support** |  | 60d | 2010-03-01 | 2010-05-21 |  | 0d |  |  |  | 3224h |
| 2 | 1.1 | Kickoff |  | 1d | 2010-03-01 | 2010-03-01 |  | 0d |  | start no earlier than 2010-03-01 |  |  |
| 4 | 1.2 | **Implementation** |  | 49d | 2010-03-02 | 2010-05-07 |  | 0d |  |  |  | 2024h |
| 5 | 1.2.1 | **ISO 21090 Library** |  | 20d | 2010-03-02 | 2010-03-29 |  | 0d |  |  |  | 480h |
| 6 | 1.2.1.1 | Analyze COPPA Localized library |  | 5d | 2010-03-02 | 2010-03-08 | 2 | 0d |  |  | SDK; caGrid | 80h |
| 7 | 1.2.1.2 | Analyze COPPA serialization framework |  | 5d | 2010-03-02 | 2010-03-08 | 2 | 54d |  |  | SDK; caGrid | 80h |
| 8 | 1.2.1.3 | Analyze COPPA OR Mapping framework |  | 5d | 2010-03-02 | 2010-03-08 | 2 | 29d | 0d |  | SDK; caGrid | 80h |
| 9 | 1.2.1.4 | Implement enhancements in datatype library |  | 15d | 2010-03-09 | 2010-03-29 | 8 | 29d | 0d |  | SDK; caGrid | 240h |
| 10 | 1.2.1.5 | Baseline library code | milestone | 0d | 2010-03-29 | 2010-03-29 | 9 | 29d | 0d |  |  |  |
| 12 | 1.2.2 | **SDK Enhancements** |  | 30d | 2010-03-09 | 2010-04-19 |  | 5d |  |  |  | 480h |
| 13 | 1.2.2.1 | Enhance SDK Java code generator for the ISO data types |  | 5d | 2010-03-09 | 2010-03-15 | 6 | 49d |  |  | SDK | 40h |
| 14 | 1.2.2.2 | Enhance SDK ORM module for ISO data types |  | 10d | 2010-03-09 | 2010-03-22 | 6 | 44d |  |  | SDK | 80h |
| 15 | 1.2.2.3 | Enhance SDK service layer to support ISO data types |  | 15d | 2010-03-09 | 2010-03-29 | 6 | 5d | 0d |  | SDK | 120h |
| 16 | 1.2.2.4 | Enhance SDK proxy framework for ISO data types |  | 5d | 2010-03-30 | 2010-04-05 | 15 | 34d |  |  | SDK | 40h |
| 17 | 1.2.2.5 | Enhance SDK RESTful query translator for ISO data types |  | 10d | 2010-03-30 | 2010-04-12 | 15 | 29d |  |  | SDK | 80h |
| 18 | 1.2.2.6 | Enhance BDA scripts for packaging and deployment |  | 10d | 2010-03-30 | 2010-04-12 | 6, 15 | 5d | 0d |  | SDK | 80h |
| 19 | 1.2.2.7 | Unit test and defect fix |  | 5d | 2010-04-13 | 2010-04-19 | 18 | 5d | 0d |  | SDK | 40h |
| 20 | 1.2.2.8 | Deliver baseline SDK | milestone | 0d | 2010-04-19 | 2010-04-19 | 19 | 24d |  |  |  |  |
| 22 | 1.2.3 | **caAdapter Enhancements** |  | 30d | 2010-03-09 | 2010-04-19 |  | 24d |  |  |  | 200h |
| 23 | 1.2.3.1 | Enhance caAdapter to load ISO 21090 information |  | 5d | 2010-03-09 | 2010-03-15 | 6 | 24d | 0d |  |  |  |
| 24 | 1.2.3.2 | Enhance caAdapter Model Mapping Service |  | 20d | 2010-03-16 | 2010-04-12 | 23 | 24d | 0d |  | caAdapter | 160h |
| 25 | 1.2.3.3 | Unit test and defect fix |  | 5d | 2010-04-13 | 2010-04-19 | 24 | 24d | 0d |  | caAdapter | 40h |
| 26 | 1.2.3.4 | Deliver baseline caAdapter | milestone | 0d | 2010-04-19 | 2010-04-19 | 25 | 24d |  |  |  |  |
| 28 | 1.2.4 | **caGrid Enhancements** |  | 35d | 2010-03-09 | 2010-04-26 |  | 0d |  |  |  | 720h |
| 29 | 1.2.4.1 | Create Introduce extensions to support ISO 21090 datatypes |  | 20d | 2010-03-09 | 2010-04-05 | 6 | 34d |  |  | caGrid | 160h |
| 30 | 1.2.4.2 | Design and implement CQL specification with translator |  | 30d | 2010-03-09 | 2010-04-19 | 6 | 0d |  |  | caGrid | 240h |
| 31 | 1.2.4.3 | Enhance DomainModel generator |  | 20d | 2010-03-09 | 2010-04-05 | 6 | 34d |  |  | caGrid | 160h |
| 32 | 1.2.4.4 | Enhance Introduce Data Service creation wizard |  | 15d | 2010-03-30 | 2010-04-19 | 30FS-15d | 0d |  |  | caGrid | 120h |
| 33 | 1.2.4.5 | Unit test and defect fix |  | 5d | 2010-04-20 | 2010-04-26 | 32 | 0d |  |  | caGrid | 40h |
| 34 | 1.2.4.6 | Deliver baseline caGrid components | milestone | 0d | 2010-04-26 | 2010-04-26 | 33 | 0d |  |  |  |  |

| ID | WBS | Task | Type | Duration | Start | Finish | Predecessors | Total slack | Resources | Work |
| --- | --- | --- | --- | --- | --- | --- | --- | --- | --- | --- |
| 36 | 1.2.5 | **SDK/caGrid Integration** |  | 9d | 2010-04-27 | 2010-05-07 |  | 0d |  | 144h |
| 37 | 1.2.5.1 | Integration testing and defect fixing |  | 9d | 2010-04-27 | 2010-05-07 | 19, 34 | 0d | SDK; caGrid | 144h |
| 38 | 1.2.5.2 | Deliver SDK and caGrid alpha version | milestone | 0d | 2010-05-07 | 2010-05-07 | 37 | 0d |  |  |
| 40 | 1.3 | **QA Testing** |  | 39d | 2010-03-30 | 2010-05-21 |  | 0d |  | 480h |
| 41 | 1.3.1 | Prepare test plan |  | 10d | 2010-03-30 | 2010-04-12 | 10 | 29d | QA; SDK; caGrid | 240h |
| 42 | 1.3.2 | Execute test cases |  | 10d | 2010-05-10 | 2010-05-21 | 38 | 0d | QA | 80h |
| 43 | 1.3.3 | Provide test support |  | 10d | 2010-05-10 | 2010-05-21 | 38 | 0d | SDK; caGrid | 160h |
| 44 | 1.3.4 | Deliver SDK, caGrid, caAdapter | milestone | 0d | 2010-05-21 | 2010-05-21 | 43 | 0d |  |  |
| 46 | 1.4 | **User Documentation** |  | 10d | 2010-05-10 | 2010-05-21 |  | 0d |  | 720h |
| 47 | 1.4.1 | Prepare developers guide for service developers with ISO 21090 datatypes |  | 10d | 2010-05-10 | 2010-05-21 | 38 | 0d | SDK; caGrid; caAdapter | 240h |
| 48 | 1.4.2 | Prepare user guide |  | 10d | 2010-05-10 | 2010-05-21 | 38 | 0d | SDK; caGrid; caAdapter | 240h |
| 49 | 1.4.3 | Prepare installation guide |  | 10d | 2010-05-10 | 2010-05-21 | 38 | 0d | SDK; caGrid; caAdapter | 240h |
| 50 | 1.4.4 | Deliver installation and user guide | milestone | 0d | 2010-05-21 | 2010-05-21 | 48, 49 | 0d |  |  |
